# 甘特图

Schedule from MS Project, 2017-03-01 to 2017-05-31, A marks actual dates.

## Calendars

- 标准: Mon-Sun 08:00-12:00, 13:00-17:00.

## Resources

| Resource |
| --- |
| 人力 |
| 开发者 |

## Schedule

| ID | WBS | Task | Type | Duration | Start | Finish | Predecessors | Complete | Remaining | Constraint | Resources | Work | Actual work | 可交付成果 |
| --- | --- | --- | --- | --- | --- | --- | --- | --- | --- | --- | --- | --- | --- | --- |
| 1 | 1 | **沟通** |  | 8d | 2017-03-01 A | 2017-03-08 A |  | 100% |  |  | 开发者 | 184h | 184h |  |
| 2 | 1.1 | **项目启动** |  | 5d | 2017-03-01 A | 2017-03-05 A |  | 100% |  |  | 开发者 | 96h | 96h |  |
| 3 | 1.1.1 | 提出项目主题 |  | 1d | 2017-03-01 A | 2017-03-01 A |  | 100% |  |  | 开发者 | 8h | 8h |  |
| 4 | 1.1.2 | 项目调研 | milestone | 2d | 2017-03-02 A | 2017-03-03 A | 3 | 100% |  |  | 开发者 | 16h | 16h | 项目调研 |
| 5 | 1.1.3 | 项目可行性分析 |  | 2d | 2017-03-02 A | 2017-03-03 A | 3 | 100% |  |  | 开发者 | 16h | 16h |  |
| 6 | 1.1.4 | 项目主题确认 |  | 2d | 2017-03-04 A | 2017-03-05 A | 5 | 100% |  |  | 开发者 | 16h | 16h |  |
| 7 | 1.2 | 初步确定项目功能 | milestone | 3d | 2017-03-06 A | 2017-03-08 A | 2 | 100% |  |  | 开发者 | 24h | 24h | 项目简介 |
| 8 | 2 | **策划** |  | 8d | 2017-03-08 A | 2017-03-15 A | 1 | 100% |  |  | 开发者 | 184h | 184h |  |
| 9 | 2.1 | **项目估算** |  | 1d | 2017-03-08 A | 2017-03-08 A | 1 | 100% |  |  | 开发者 | 8h | 8h |  |
| 10 | 2.1.1 | 人力资源估算 | milestone | 0d | 2017-03-08 A | 2017-03-08 A | 1 | 100% |  |  | 开发者 |  |  |  |
| 11 | 2.1.2 | 可复用软件资源估算 | milestone | 0d | 2017-03-08 A | 2017-03-08 A | 1 | 100% |  |  | 开发者 |  |  |  |
| 12 | 2.2 | **制定开发计划** |  | 6d | 2017-03-09 A | 2017-03-14 A | 9 | 100% |  |  | 开发者 | 104h | 104h |  |
| 13 | 2.2.1 | 建立任务集合 |  | 1d | 2017-03-09 A | 2017-03-09 A | 11 | 100% |  |  | 开发者 | 8h | 8h | 项目任务集合 |
| 14 | 2.2.2 | 进度安排 |  | 1d | 2017-03-09 A | 2017-03-09 A | 11 | 100% |  |  | 开发者 | 8h | 8h | 甘特图 |
| 15 | 2.2.3 | 制定风险管理计划 | milestone | 1d | 2017-03-10 A | 2017-03-10 A | 14 | 100% |  |  | 开发者 | 8h | 8h | 风险管理计划 |
| 16 | 2.2.4 | 制定质量保证计划 | milestone | 1d | 2017-03-11 A | 2017-03-11 A | 15 | 100% |  |  | 开发者 | 8h | 8h | 质量保证计划 |
| 17 | 2.2.5 | 制定配置管理计划 | milestone | 1d | 2017-03-12 A | 2017-03-12 A | 16 | 100% |  |  | 开发者 | 8h | 8h | 配置管理计划 |
| 18 | 2.2.6 | 编写项目开发计划 | milestone | 2d | 2017-03-13 A | 2017-03-14 A | 17 | 100% |  |  | 开发者 | 16h | 16h | 项目开发计划 |
| 19 | 2.3 | 项目跟踪 |  | 1d | 2017-03-15 A | 2017-03-15 A | 12 | 100% |  | start no earlier than 2017-03-13 | 开发者 | 8h | 8h |  |
| 20 | 3 | **建模** |  | 42d | 2017-03-16 A | 2017-04-26 | 8 | 32% | 28.64d |  | 开发者 | 1160h | 216h |  |
| 21 | 3.1 | **需求获取** |  | 28d | 2017-03-16 A | 2017-04-12 | 8 | 50% | 14d |  | 开发者 | 712h | 216h |  |
| 22 | 3.1.1 | 确认利益相关者 |  | 1d | 2017-03-16 A | 2017-03-16 A | 8 | 100% |  |  | 开发者 | 8h | 8h |  |
| 23 | 3.1.2 | **需求导出** |  | 6d | 2017-03-17 A | 2017-03-22 A | 22 | 100% |  |  | 开发者 | 96h | 96h |  |
| 24 | 3.1.2.1 | 通过讨论收集需求 |  | 3d | 2017-03-17 A | 2017-03-19 A | 22 | 100% |  |  | 开发者 | 24h | 24h |  |
| 25 | 3.1.2.2 | 质量功能部署 |  | 1d | 2017-03-20 A | 2017-03-20 A | 24 | 100% |  |  | 开发者 | 8h | 8h |  |
| 26 | 3.1.2.3 | 编写需求清单 | milestone | 2d | 2017-03-21 A | 2017-03-22 A | 25 | 100% |  |  | 开发者 | 16h | 16h | 项目需求清单 |

| ID | WBS | Task | Type | Duration | Start | Finish | Predecessors | Complete | Remaining | Total slack | Constraint | Resources | Work | Actual work | 可交付成果 |
| --- | --- | --- | --- | --- | --- | --- | --- | --- | --- | --- | --- | --- | --- | --- | --- |
| 27 | 3.1.3 | **需求建模** |  | 15d | 2017-03-22 A | 2017-04-05 | 23 | 50% | 7.5d |  |  | 开发者 | 328h | 112h |  |
| 28 | 3.1.3.1 | **构建基于场景建模** |  | 7d | 2017-03-22 A | 2017-03-28 A | 23 | 100% |  |  |  | 开发者 | 112h | 112h |  |
| 29 | 3.1.3.1.1 | 创建用例 |  | 2d | 2017-03-22 A | 2017-03-23 A |  | 100% |  |  | start no earlier than 2017-03-22 | 开发者 | 16h | 16h |  |
| 30 | 3.1.3.1.2 | 细化用例 |  | 2d | 2017-03-24 A | 2017-03-25 A | 29 | 100% |  |  |  | 开发者 | 16h | 16h |  |
| 31 | 3.1.3.1.3 | 编写正规用例 | milestone | 3d | 2017-03-26 A | 2017-03-28 A | 30 | 100% |  |  |  | 开发者 | 24h | 24h | 用户故事 |
| 32 | 3.1.3.2 | **构建类模型** |  | 5d | 2017-03-30 | 2017-04-03 | 28 |  |  |  |  | 开发者 | 80h |  |  |
| 33 | 3.1.3.2.1 | 识别分析类 |  | 1d | 2017-03-30 | 2017-03-30 | 28 |  |  | 0d |  | 开发者 | 8h |  |  |
| 34 | 3.1.3.2.2 | 描述属性 |  | 1d | 2017-03-31 | 2017-03-31 | 33 |  |  | 0d |  | 开发者 | 8h |  |  |
| 35 | 3.1.3.2.3 | 定义操作 |  | 1d | 2017-04-01 | 2017-04-01 | 34 |  |  | 0d |  | 开发者 | 8h |  |  |
| 36 | 3.1.3.2.4 | 确定类间关系 |  | 1d | 2017-04-02 | 2017-04-02 | 35 |  |  | 0d |  | 开发者 | 8h |  |  |
| 37 | 3.1.3.2.5 | 分析包 | milestone | 1d | 2017-04-03 | 2017-04-03 | 36 |  |  | 0d |  | 开发者 | 8h |  | 类模型 |
| 38 | 3.1.3.3 | 构建行为模型 | milestone | 1d | 2017-04-04 | 2017-04-04 | 32 |  |  | 0d |  | 开发者 | 8h |  | 行为模型 |
| 39 | 3.1.3.4 | 构建数据流模型 | milestone | 1d | 2017-04-05 | 2017-04-05 | 38 |  |  | 0d |  | 开发者 | 8h |  | 数据流模型 |
| 40 | 3.1.4 | 编写需求规格说明 | milestone | 5d | 2017-04-06 | 2017-04-10 | 27 |  |  | 0d |  | 开发者 | 40h |  | 软件需求规格说明 |
| 41 | 3.1.5 | 需求评审 |  | 2d | 2017-04-11 | 2017-04-12 | 40 |  |  | 0d |  | 开发者 | 16h |  |  |
| 42 | 3.2 | **设计** |  | 8d | 2017-04-13 | 2017-04-20 | 21 |  |  |  |  | 开发者 | 64h |  |  |
| 43 | 3.2.1 | 数据结构设计 |  | 1d | 2017-04-13 | 2017-04-13 | 21 |  |  | 48d | start no earlier than 2017-04-12 |  |  |  |  |
| 44 | 3.2.2 | 数据库设计 |  | 1d | 2017-04-13 | 2017-04-13 | 21 |  |  | 0d |  |  |  |  |  |
| 45 | 3.2.3 | 选择体系结构 |  | 1d | 2017-04-14 | 2017-04-14 | 44 |  |  | 0d |  |  |  |  |  |
| 46 | 3.2.4 | 划分功能模块 |  | 1d | 2017-04-15 | 2017-04-15 | 45 |  |  | 0d |  |  |  |  |  |
| 47 | 3.2.5 | 设计模块接口 |  | 1d | 2017-04-16 | 2017-04-16 | 46 |  |  | 0d |  |  |  |  |  |
| 48 | 3.2.6 | 设计模块算法 |  | 1d | 2017-04-16 | 2017-04-16 | 46 |  |  | 0d |  |  |  |  |  |
| 49 | 3.2.7 | 用户界面设计 |  | 2d | 2017-04-17 | 2017-04-18 | 47, 48 |  |  | 0d |  |  |  |  |  |
| 50 | 3.2.8 | 进行构件级设计 |  | 1d | 2017-04-19 | 2017-04-19 | 49 |  |  | 0d |  |  |  |  |  |
| 51 | 3.2.9 | 设计评审 |  | 1d | 2017-04-20 | 2017-04-20 | 50 |  |  | 0d |  |  |  |  |  |
| 52 | 3.3 | 编写软件设计说明 | milestone | 6d | 2017-04-21 | 2017-04-26 | 42 |  |  | 35d | start no earlier than 2017-04-20 | 开发者 | 48h |  | 软件设计说明 |

| ID | WBS | Task | Type | Duration | Start | Finish | Predecessors | Total slack | Free slack | Constraint | Resources | Work | 可交付成果 |
| --- | --- | --- | --- | --- | --- | --- | --- | --- | --- | --- | --- | --- | --- |
| 53 | 4 | **构建** |  | 29d | 2017-04-26 | 2017-05-24 | 20 |  |  |  | 开发者 | 960h |  |
| 54 | 4.1 | **编码** |  | 14d | 2017-04-26 | 2017-05-09 | 20 |  |  |  | 开发者 | 432h |  |
| 55 | 4.1.1 | 锁屏界面开发 |  | 1d | 2017-04-26 | 2017-04-26 |  | -5d | 0d | start no earlier than 2017-04-26 | 开发者 | 8h |  |
| 56 | 4.1.2 | 事件管理模块 |  | 1d | 2017-04-26 | 2017-04-26 |  | -5d | 0d |  | 开发者 | 8h |  |
| 57 | 4.1.3 | 任务计划模块 |  | 1d | 2017-04-26 | 2017-04-26 |  | -5d | 0d |  | 开发者 | 8h |  |
| 58 | 4.1.4 | 时间记录模块 |  | 1d | 2017-04-27 | 2017-04-27 | 57, 55, 56 | -5d | 0d |  | 开发者 | 8h |  |
| 59 | 4.1.5 | 计时功能开发 |  | 1d | 2017-04-27 | 2017-04-27 | 57, 55, 56 | -5d | 0d |  | 开发者 | 8h |  |
| 60 | 4.1.6 | 时间计划模块 |  | 1d | 2017-04-27 | 2017-04-27 | 57, 55, 56 | -5d | 0d |  | 开发者 | 8h |  |
| 61 | 4.1.7 | **数据库模块** |  | 8d | 2017-04-28 | 2017-05-05 | 60, 58, 59 | -5d | 0d |  | 开发者 | 120h |  |
| 62 | 4.1.7.1 | 时间记录数据库构建 |  | 1d | 2017-04-28 | 2017-04-28 | 60, 58, 59 | 1d |  |  | 开发者 | 8h |  |
| 63 | 4.1.7.2 | 时间管理数据库构建 |  | 4d | 2017-04-28 | 2017-05-04 | 60, 58, 59 | -5d | 0d | start no earlier than 2017-04-22 | 开发者 | 32h |  |
| 64 | 4.1.7.3 | 事件管理数据库构建 |  | 1d | 2017-04-28 | 2017-04-28 | 60, 58, 59 | 1d |  |  | 开发者 | 8h |  |
| 65 | 4.1.7.4 | SQLite数据库接口开发 |  | 1d | 2017-05-05 | 2017-05-05 | 64, 62, 63 | -5d | 0d |  | 开发者 | 8h |  |
| 66 | 4.1.8 | **数据可视化模块** |  | 2d | 2017-05-06 | 2017-05-07 | 61 | -5d | 0d |  | 开发者 | 40h |  |
| 67 | 4.1.8.1 | 开发报表生成子模块 |  | 1d | 2017-05-06 | 2017-05-06 | 61 | -4d | 0d |  | 开发者 | 8h |  |
| 68 | 4.1.8.2 | 开发基于MPAndroidChart的图形生成子模块 |  | 2d | 2017-05-06 | 2017-05-07 | 61 | -5d | 0d |  | 开发者 | 16h |  |
| 69 | 4.1.9 | 基于Android的用户界面开发 |  | 1d | 2017-05-06 | 2017-05-06 | 61 | -4d | 0d |  | 开发者 | 8h |  |
| 70 | 4.1.10 | **其他功能** |  | 2d | 2017-05-08 | 2017-05-09 | 69, 66 | -5d | 0d |  | 开发者 | 48h |  |
| 71 | 4.1.10.1 | 进程记录功能开发 |  | 1d | 2017-05-08 | 2017-05-08 | 69, 66 | -4d | 0d |  | 开发者 | 8h |  |
| 72 | 4.1.10.2 | 用户导航功能开发 |  | 1d | 2017-05-08 | 2017-05-08 | 69, 66 | -4d | 0d |  | 开发者 | 8h |  |
| 73 | 4.1.10.3 | 提醒功能开发 |  | 2d | 2017-05-08 | 2017-05-09 | 69, 66 | -5d | 0d |  | 开发者 | 16h |  |
| 74 | 4.1.11 | **功能整合** |  | 2d | 2017-05-10 | 2017-05-11 | 70 | -5d | 0d |  | 开发者 | 32h |  |
| 75 | 4.1.11.1 | 数据库模块整合 |  | 1d | 2017-05-10 | 2017-05-10 | 70 | -5d | 0d |  | 开发者 | 8h |  |
| 76 | 4.1.11.2 | 用户界面整合 | milestone | 1d | 2017-05-11 | 2017-05-11 | 75 | -5d | 0d |  | 开发者 | 8h | 可执行软件 |
| 77 | 4.1.12 | 编写使用说明 | milestone | 1d | 2017-05-12 | 2017-05-12 | 74 | -5d | 0d |  | 开发者 | 8h | 使用说明 |
| 78 | 4.1.13 | 编写模块开发卷宗 | milestone | 1d | 2017-05-13 | 2017-05-13 | 77 | -5d | 0d |  | 开发者 | 8h | 模块开发卷宗 |
| 79 | 4.1.14 | 编写开发进度月报 | milestone | 1d | 2017-05-14 | 2017-05-14 | 78 | -5d | 0d |  | 开发者 | 8h | 开发进度月报 |

| ID | WBS | Task | Type | Duration | Start | Finish | Predecessors | Total slack | Constraint | Resources | Work | 可交付成果 |
| --- | --- | --- | --- | --- | --- | --- | --- | --- | --- | --- | --- | --- |
| 80 | 4.2 | **测试** |  | 14d | 2017-05-11 | 2017-05-24 | 54 |  |  | 开发者 | 296h |  |
| 81 | 4.2.1 | 编写测试计划 | milestone | 1d | 2017-05-11 | 2017-05-11 | 54 | 0d |  | 开发者 | 8h | 测试计划 |
| 82 | 4.2.2 | **单元测试** |  | 2d | 2017-05-12 | 2017-05-13 | 81 |  |  | 开发者 | 32h |  |
| 83 | 4.2.2.1 | 基本路径测试 |  | 1d | 2017-05-12 | 2017-05-12 | 81 | 0d |  | 开发者 | 8h |  |
| 84 | 4.2.2.2 | 循环测试 |  | 1d | 2017-05-13 | 2017-05-13 | 83 | 0d |  | 开发者 | 8h |  |
| 85 | 4.2.3 | 基于使用的集成测试 |  | 2d | 2017-05-14 | 2017-05-15 | 82 | 0d | start no earlier than 2017-03-01 | 开发者 | 16h |  |
| 86 | 4.2.4 | **确认测试** |  | 2d | 2017-05-16 | 2017-05-17 | 85 | 0d |  | 开发者 | 32h |  |
| 87 | 4.2.4.1 | 等价类划分 |  | 1d | 2017-05-16 | 2017-05-16 | 85 | 0d |  | 开发者 | 8h |  |
| 88 | 4.2.4.2 | 边界值分析 |  | 1d | 2017-05-17 | 2017-05-17 | 87 | 0d |  | 开发者 | 8h |  |
| 89 | 4.2.5 | **系统测试** |  | 3d | 2017-05-18 | 2017-05-20 | 86 | 0d |  | 开发者 | 48h |  |
| 90 | 4.2.5.1 | 恢复测试 |  | 1d | 2017-05-18 | 2017-05-18 | 86 | 0d |  | 开发者 | 8h |  |
| 91 | 4.2.5.2 | 性能测试 |  | 1d | 2017-05-19 | 2017-05-19 | 90 | 0d |  | 开发者 | 8h |  |
| 92 | 4.2.5.3 | 部署测试 |  | 1d | 2017-05-20 | 2017-05-20 | 91 | 0d |  | 开发者 | 8h |  |
| 93 | 4.2.6 | **验收测试** |  | 2d | 2017-05-21 | 2017-05-22 | 89 | 0d |  | 开发者 | 32h |  |
| 94 | 4.2.6.1 | 测试整个系统 |  | 1d | 2017-05-21 | 2017-05-21 | 89 | 0d |  | 开发者 | 8h |  |
| 95 | 4.2.6.2 | 试用使用说明 |  | 1d | 2017-05-22 | 2017-05-22 | 94 | 0d |  | 开发者 | 8h |  |
| 96 | 4.2.7 | 编写测试分析报告 | milestone | 2d | 2017-05-23 | 2017-05-24 | 93 | 0d |  | 开发者 | 16h | 测试分析报告 |
| 97 | 5 | **部署** |  | 7d | 2017-05-25 | 2017-05-31 | 53 |  |  | 开发者 | 112h |  |
| 98 | 5.1 | 编写项目开发总结 | milestone | 5d | 2017-05-25 | 2017-05-29 | 53 | 0d |  | 开发者 | 40h | 项目开发总结 |
| 99 | 5.2 | 交付 |  | 2d | 2017-05-30 | 2017-05-31 | 98 | 0d |  | 开发者 | 16h |  |
